# IB 软件开发计划

Schedule from a web Gantt chart, 2024-12-13 to 2025-02-28.
Saturdays and Sundays are off

## Schedule

| ID | WBS | Task | Duration | Start | Finish | Predecessors | inPeople | Status |
| --- | --- | --- | --- | --- | --- | --- | --- | --- |
| 2 | 1 | **SR1620** | 56d | 2024-12-13 | 2025-02-28 |  |  |  |
| 3 | 1.1 | **CEC202407-001** | 56d | 2024-12-13 | 2025-02-28 |  | 朱海丰 |  |
| 4 | 1.1.1 | 需求/设计 | 8d | 2024-12-13 | 2024-12-24 |  |  |  |
| 5 | 1.1.2 | 技术方案 | 3d | 2024-12-25 | 2024-12-27 | 4 |  | waiting |
| 6 | 1.1.3 | 软件开发 | 20d | 2024-12-30 | 2025-01-24 | 5 |  | waiting |
| 7 | 1.1.4 | 软件集成 | 8d | 2025-02-05 | 2025-02-14 |  |  |  |
| 8 | 1.1.5 | 软件测试 | 10d | 2025-02-17 | 2025-02-28 | 7 |  | waiting |
| 9 | 2 | **SR1420/SR1420-i** | 42d | 2024-12-25 | 2025-02-20 |  |  |  |
| 10 | 2.1 | **EC202407-011（与分片电极合并）** | 42d | 2024-12-25 | 2025-02-20 |  | 朱海丰/曹文明 |  |
| 11 | 2.1.1 | 需求/设计 | 8d | 2024-12-25 | 2025-01-03 | 4 |  | waiting |
| 12 | 2.1.2 | 技术方案 | 3d | 2025-01-06 | 2025-01-08 | 11 |  | waiting |
| 13 | 2.1.3 | 软件开发 | 12d | 2025-01-09 | 2025-01-24 | 12 |  | waiting |
| 14 | 2.1.4 | 软件集成 | 6d | 2025-02-05 | 2025-02-12 |  |  |  |
| 15 | 2.1.5 | 软件测试 | 6d | 2025-02-13 | 2025-02-20 | 14 |  | waiting |
| 16 | 3 | **SR1633** | 40d | 2025-01-06 | 2025-02-28 |  |  |  |
| 17 | 3.1 | **CECXXX（与分片电极合并）** | 40d | 2025-01-06 | 2025-02-28 |  | 邓泽/张俊 |  |
| 18 | 3.1.1 | 需求/设计 | 3d | 2025-01-06 | 2025-01-08 | 11 |  | waiting |
| 19 | 3.1.2 | 技术方案 | 3d | 2025-01-09 | 2025-01-13 | 18 |  | waiting |
| 20 | 3.1.3 | 软件开发1（春节前） | 9d | 2025-01-14 | 2025-01-24 | 19 |  | waiting |
| 21 | 3.1.4 | 软件开发2（春节后） | 11d | 2025-02-05 | 2025-02-19 |  |  |  |
| 22 | 3.1.5 | 软件集成 | 3d | 2025-02-20 | 2025-02-24 | 21 |  | waiting |
| 23 | 3.1.6 | 软件测试 | 4d | 2025-02-25 | 2025-02-28 | 22 |  | waiting |
| 24 | 4 | **SR2202** | 20d | 2024-12-16 | 2025-01-10 |  |  |  |
| 25 | 4.1 | DC202409-003 | 1d | 2024-12-16 | 2024-12-16 |  | 梁德平 |  |

Notes:
- 25: 已完成开发、测试

| ID | WBS | Task | Duration | Start | Finish | Predecessors | inPeople | Status |
| --- | --- | --- | --- | --- | --- | --- | --- | --- |
| 26 | 4.2 | **DC202407-004（与分片电极合并）** | 16d | 2024-12-20 | 2025-01-10 |  | 梁德平 |  |
| 27 | 4.2.1 | 技术方案 | 3d | 2024-12-20 | 2024-12-24 |  |  |  |
| 28 | 4.2.2 | 软件开发 | 5d | 2024-12-25 | 2024-12-31 | 27 |  | waiting |
| 29 | 4.2.3 | 软件集成 | 3d | 2025-01-01 | 2025-01-03 | 28 |  | waiting |
| 30 | 4.2.4 | 软件测试 | 5d | 2025-01-06 | 2025-01-10 | 29 |  | waiting |
| 31 | 5 | **生产软件** | 16d | 2025-02-05 | 2025-02-26 |  |  |  |
| 32 | 5.1 | **EC202407-028** | 16d | 2025-02-05 | 2025-02-26 |  | 曹文明 |  |
| 33 | 5.1.1 | 技术方案 | 3d | 2025-02-05 | 2025-02-07 |  |  |  |
| 34 | 5.1.2 | 软件开发 | 5d | 2025-02-10 | 2025-02-14 | 33 |  | waiting |
| 35 | 5.1.3 | 软件集成 | 3d | 2025-02-17 | 2025-02-19 | 34 |  | waiting |
| 36 | 5.1.4 | 软件测试 | 5d | 2025-02-20 | 2025-02-26 | 35 |  | waiting |
